Schedule from MS Project, 2009-06-02 to 2009-08-17.

## Calendars

- Estándar: Mon-Fri 09:00-13:00, 15:00-19:00; Sat-Sun off. Exceptions (off unless hours are given): 2009-07-25 09:00-13:00, 15:00-19:00.

## Schedule

| ID | WBS | Task | Type | Duration | Start | Finish | Predecessors | Total slack | Free slack | Constraint | Deadline |
| --- | --- | --- | --- | --- | --- | --- | --- | --- | --- | --- | --- |
| 1 | 1 | **Vestuario** |  | 33d | 2009-06-02 09:00 | 2009-07-17 09:00 |  | 22.12d |  |  |  |
| 2 | 1.1 | **Vestuario del novio** |  | 8.25d | 2009-06-02 09:00 | 2009-06-12 11:00 |  | 25.75d |  |  |  |
| 3 | 1.1.1 | Concertar cita previa |  | 1h | 2009-06-02 09:00 | 2009-06-02 10:00 |  | 25.75d | 0d |  |  |
| 4 | 1.1.2 | Selección de posibilidades |  | 3h | 2009-06-02 10:00 | 2009-06-02 13:00 | 3 | 25.75d | 0d |  |  |
| 5 | 1.1.3 | Elección traje definitivo |  | 3h | 2009-06-02 15:00 | 2009-06-02 18:00 | 4 | 25.75d | 0d |  |  |
| 6 | 1.1.4 | Selección de complementos |  | 1h | 2009-06-02 18:00 | 2009-06-02 19:00 | 5 | 25.75d | 0d |  |  |
| 7 | 1.1.5 | Elección definitiva de complementos |  | 1h | 2009-06-03 09:00 | 2009-06-03 10:00 | 6 | 25.75d | 0d |  |  |
| 8 | 1.1.6 | Firma de contrato modista | milestone | 0d | 2009-06-03 10:00 | 2009-06-03 10:00 | 7 | 25.75d | 0d |  |  |
| 9 | 1.1.7 | Realización de arreglos |  | 7d | 2009-06-03 10:00 | 2009-06-12 10:00 | 8 | 25.75d | 0d |  |  |
| 10 | 1.1.8 | Prueba de arreglos |  | 1h | 2009-06-12 10:00 | 2009-06-12 11:00 | 9 | 25.75d | 0d |  |  |
| 11 | 1.1.9 | Entrega del traje | milestone | 0d | 2009-06-12 11:00 | 2009-06-12 11:00 | 10 | 25.75d | 3.12d |  | 2009-07-17 19:00 |
| 12 | 1.2 | **Vestuario de la novia** |  | 11.38d | 2009-06-02 09:00 | 2009-06-17 12:00 |  | 22.62d |  |  |  |
| 13 | 1.2.1 | Concertar cita previa |  | 1h | 2009-06-02 09:00 | 2009-06-02 10:00 |  | 22.62d | 0d |  |  |
| 14 | 1.2.2 | Selección de posibilidades |  | 4h | 2009-06-02 10:00 | 2009-06-02 16:00 | 13 | 22.62d | 0d |  |  |
| 15 | 1.2.3 | Elección traje definitivo |  | 3h | 2009-06-02 16:00 | 2009-06-02 19:00 | 14 | 22.62d | 0d |  |  |
| 16 | 1.2.4 | Selección de complementos |  | 1h | 2009-06-03 09:00 | 2009-06-03 10:00 | 15 | 22.62d | 0d |  |  |
| 17 | 1.2.5 | Elección definitiva de complementos |  | 1h | 2009-06-03 10:00 | 2009-06-03 11:00 | 16 | 22.62d | 0d |  |  |
| 18 | 1.2.6 | Firma de contrato modista | milestone | 0d | 2009-06-03 11:00 | 2009-06-03 11:00 | 17 | 22.62d | 0d |  |  |
| 19 | 1.2.7 | Realización de arreglos |  | 10d | 2009-06-03 11:00 | 2009-06-17 11:00 | 18 | 22.62d | 0d |  |  |
| 20 | 1.2.8 | Prueba de arregos |  | 1h | 2009-06-17 11:00 | 2009-06-17 12:00 | 19 | 22.62d | 0d |  |  |
| 21 | 1.2.9 | Entrega del traje | milestone | 0d | 2009-06-17 12:00 | 2009-06-17 12:00 | 20 | 22.62d | 0d |  | 2009-07-17 19:00 |
| 22 | 1.3 | Pago y cierre de vestuario | milestone | 0d | 2009-07-17 09:00 | 2009-07-17 09:00 | 11, 21 | 22.12d |  | start no earlier than 2009-07-17 09:00 |  |
| 23 | 2 | **Anillos** |  | 33d | 2009-06-02 09:00 | 2009-07-17 09:00 |  | 22.12d |  |  |  |
| 24 | 2.1 | Concertar cita previa |  | 1h | 2009-06-02 09:00 | 2009-06-02 10:00 |  | 26.38d | 0d |  |  |
| 25 | 2.2 | Selección de posiblidades |  | 2h | 2009-06-02 10:00 | 2009-06-02 12:00 | 24 | 26.38d | 0d |  |  |
| 26 | 2.3 | Elección modelo definitivo |  | 1h | 2009-06-02 12:00 | 2009-06-02 13:00 | 25 | 26.38d | 0d |  |  |
| 27 | 2.4 | Firma de contrato joyería | milestone | 0d | 2009-06-02 13:00 | 2009-06-02 13:00 | 26 | 26.38d | 0d |  |  |
| 28 | 2.5 | Arreglos y grabados |  | 7d | 2009-06-02 15:00 | 2009-06-11 13:00 | 27 | 26.38d | 0d |  |  |
| 29 | 2.6 | Prueba de arregos |  | 1h | 2009-06-11 15:00 | 2009-06-11 16:00 | 28 | 26.38d | 0d |  |  |
| 30 | 2.7 | Entrega de alianzas | milestone | 0d | 2009-06-11 16:00 | 2009-06-11 16:00 | 29 | 26.38d | 25.38d |  | 2009-07-17 19:00 |
| 31 | 2.8 | Pago y Cierre contrato alianzas | milestone | 0d | 2009-07-17 09:00 | 2009-07-17 09:00 | 30 | 22.12d |  | start no earlier than 2009-07-17 09:00 |  |

| ID | WBS | Task | Type | Duration | Start | Finish | Predecessors | Total slack | Free slack | Constraint |
| --- | --- | --- | --- | --- | --- | --- | --- | --- | --- | --- |
| 32 | 3 | **Peinado** |  | 39.25d | 2009-06-02 09:00 | 2009-07-25 11:00 |  | 15.88d |  |  |
| 33 | 3.1 | Concertar cita previa |  | 1h | 2009-06-02 09:00 | 2009-06-02 10:00 |  | 53.62d | 0d |  |
| 34 | 3.2 | Selección de posiblidades |  | 1h | 2009-06-02 10:00 | 2009-06-02 11:00 | 33 | 53.62d | 0d |  |
| 35 | 3.3 | Prueba de posiblidades |  | 4h | 2009-06-02 11:00 | 2009-06-02 17:00 | 34 | 53.62d | 0d |  |
| 36 | 3.4 | Selección de peinado definitivo |  | 1h | 2009-06-02 17:00 | 2009-06-02 18:00 | 35 | 53.62d | 0d |  |
| 37 | 3.5 | Firma de contrato peinado | milestone | 0d | 2009-06-02 18:00 | 2009-06-02 18:00 | 36 | 53.62d | 0d |  |
| 38 | 3.6 | Servicio peluquería fotos estudio |  | 2h | 2009-06-02 18:00 | 2009-06-03 10:00 | 37 | 53.62d | 10.25d |  |
| 39 | 3.7 | Servicio de peluquería |  | 2h | 2009-07-25 09:00 | 2009-07-25 11:00 | 38 | 15.88d | 0d | start no earlier than 2009-07-25 09:00 |
| 40 | 3.8 | Pago y Cierre contrato peluquería | milestone | 0d | 2009-07-25 11:00 | 2009-07-25 11:00 | 39 | 15.88d |  |  |
| 41 | 4 | **Fotografía** |  | 55.12d | 2009-06-02 09:00 | 2009-08-17 10:00 |  | 0d |  |  |
| 42 | 4.1 | Concertar cita previa |  | 1h | 2009-06-02 09:00 | 2009-06-02 10:00 |  | 53.75d | 0d |  |
| 43 | 4.2 | Selección de album |  | 1h | 2009-06-02 10:00 | 2009-06-02 11:00 | 42 | 53.75d | 0d |  |
| 44 | 4.3 | Firma contrato fotógrafo | milestone | 0d | 2009-06-02 11:00 | 2009-06-02 11:00 | 43 | 53.75d | 11.12d |  |
| 45 | 4.4 | Realización fotos estudio |  | 2h | 2009-06-17 12:00 | 2009-06-17 16:00 | 44, 21, 11, 38 | 43.38d |  |  |
| 46 | 4.5 | Realización reportaje fotográfico |  | 8h | 2009-07-25 09:00 | 2009-07-25 19:00 | 44 | 15d |  | start no earlier than 2009-07-25 09:00 |
| 47 | 4.6 | Entrega reportaje fotográfico |  | 1h | 2009-08-17 09:00 | 2009-08-17 10:00 | 46, 45 | 0d |  | start no earlier than 2009-08-15 09:00 |
| 48 | 4.7 | Pago y Cierre contrato fotógrafo | milestone | 0d | 2009-08-17 10:00 | 2009-08-17 10:00 | 47 | 0d |  |  |
| 49 | 5 | **Flores y decoración** |  | 41d | 2009-06-02 09:00 | 2009-07-28 09:00 |  | 14.12d |  |  |
| 50 | 5.1 | Concertar cita previa |  | 1h | 2009-06-02 09:00 | 2009-06-02 10:00 |  | 53.5d | 0d |  |
| 51 | 5.2 | Selección del tipo de decoración |  | 2h | 2009-06-02 10:00 | 2009-06-02 12:00 | 50 | 53.5d | 0d |  |
| 52 | 5.3 | Selección tipo plantas |  | 1h | 2009-06-02 12:00 | 2009-06-02 13:00 | 51 | 53.5d | 0d |  |
| 53 | 5.4 | Selección ramo novia |  | 1h | 2009-06-02 15:00 | 2009-06-02 16:00 | 52 | 53.5d | 0d |  |
| 54 | 5.5 | Firma contrato floristería | milestone | 0d | 2009-06-02 16:00 | 2009-06-02 16:00 | 53 | 53.5d | 38.38d |  |
| 55 | 5.6 | Instalación decoración iglesia |  | 8h | 2009-07-25 09:00 | 2009-07-25 19:00 | 54, 114 | 15.12d | 1d | start no earlier than 2009-07-25 09:00 |
| 56 | 5.7 | Entrega ramo novia | milestone | 0d | 2009-07-25 09:00 | 2009-07-25 09:00 | 54 | 16.12d | 2d | start no earlier than 2009-07-25 09:00 |
| 57 | 5.8 | Pago y Cierre contrato floristería | milestone | 0d | 2009-07-28 09:00 | 2009-07-28 09:00 | 56, 55 | 14.12d |  | start no earlier than 2009-07-28 09:00 |

| ID | WBS | Task | Type | Duration | Start | Finish | Predecessors | Total slack | Free slack | Constraint | Deadline |
| --- | --- | --- | --- | --- | --- | --- | --- | --- | --- | --- | --- |
| 58 | 6 | **Papelería y regalos** |  | 41d | 2009-06-02 09:00 | 2009-07-28 09:00 |  | 2.5d |  |  |  |
| 59 | 6.1 | **Invitaciones** |  | 11.5d | 2009-06-02 09:00 | 2009-06-17 13:00 |  | 2.5d |  |  |  |
| 60 | 6.1.1 | Elaboración lista invitados |  | 2d | 2009-06-02 09:00 | 2009-06-03 19:00 |  | 2.5d | 0d |  |  |
| 61 | 6.1.2 | Elaboración lista bodas |  | 2d | 2009-06-04 09:00 | 2009-06-05 19:00 | 60 | 2.5d | 0d |  |  |
| 62 | 6.1.3 | Concertar cita previa |  | 1h | 2009-06-08 09:00 | 2009-06-08 10:00 | 61 | 2.5d | 0d |  |  |
| 63 | 6.1.4 | Selección tipo invitación |  | 2h | 2009-06-08 10:00 | 2009-06-08 12:00 | 62 | 2.5d | 0d |  |  |
| 64 | 6.1.5 | Selección texto invitación |  | 1h | 2009-06-08 12:00 | 2009-06-08 13:00 | 63 | 2.5d | 0d |  |  |
| 65 | 6.1.6 | Firma contrato papelería | milestone | 0d | 2009-06-08 13:00 | 2009-06-08 13:00 | 64 | 2.5d | 0d |  |  |
| 66 | 6.1.7 | Envío invitaciones |  | 7d | 2009-06-08 15:00 | 2009-06-17 13:00 | 65 | 2.5d |  |  | 2009-06-19 19:00 |
| 67 | 6.2 | **Regalo madrina** |  | 7.25d | 2009-06-02 09:00 | 2009-06-11 11:00 |  | 31.75d |  |  |  |
| 68 | 6.2.1 | Concertar cita previa |  | 1h | 2009-06-02 09:00 | 2009-06-02 10:00 |  | 31.75d | 0d |  |  |
| 69 | 6.2.2 | Selección regalo |  | 1h | 2009-06-02 10:00 | 2009-06-02 11:00 | 68 | 31.75d | 0d |  |  |
| 70 | 6.2.3 | Firma contrato regalos madrina | milestone | 0d | 2009-06-02 11:00 | 2009-06-02 11:00 | 69 | 31.75d | 0d |  |  |
| 71 | 6.2.4 | Entrega regalos madrina |  | 7d | 2009-06-02 11:00 | 2009-06-11 11:00 | 70 | 31.75d |  |  | 2009-07-24 19:00 |
| 72 | 6.3 | **Regalo padrino** |  | 7.25d | 2009-06-02 09:00 | 2009-06-11 11:00 |  | 31.75d |  |  |  |
| 73 | 6.3.1 | Concertar cita previa |  | 1h | 2009-06-02 09:00 | 2009-06-02 10:00 |  | 31.75d | 0d |  |  |
| 74 | 6.3.2 | Selección regalo |  | 1h | 2009-06-02 10:00 | 2009-06-02 11:00 | 73 | 31.75d | 0d |  |  |
| 75 | 6.3.3 | Firma contrato regalo padrino | milestone | 0d | 2009-06-02 11:00 | 2009-06-02 11:00 | 74 | 31.75d | 0d |  |  |
| 76 | 6.3.4 | Entrega regalos padrino |  | 7d | 2009-06-02 11:00 | 2009-06-11 11:00 | 75 | 31.75d |  |  | 2009-07-24 19:00 |
| 77 | 6.4 | Pago y Cierre contrato papelería y regalos | milestone | 0d | 2009-07-28 09:00 | 2009-07-28 09:00 | 66, 71, 76 | 14.12d |  | start no earlier than 2009-07-28 09:00 |  |
| 78 | 7 | **Orquesta y música** |  | 44d | 2009-06-02 09:00 | 2009-07-31 09:00 |  | 11.12d |  |  |  |
| 79 | 7.1 | **Música ceremonia** |  | 41d | 2009-06-02 09:00 | 2009-07-28 09:00 |  | 14.12d |  |  |  |
| 80 | 7.1.1 | Concertar cita previa |  | 1h | 2009-06-02 09:00 | 2009-06-02 10:00 |  | 53d | 0d |  |  |
| 81 | 7.1.2 | Selección repertorio |  | 1d | 2009-06-02 10:00 | 2009-06-03 10:00 | 80 | 53d | 0d |  |  |
| 82 | 7.1.3 | Firma contrato música ceremonia | milestone | 0d | 2009-06-03 10:00 | 2009-06-03 10:00 | 81 | 53d | 37.88d |  |  |
| 83 | 7.1.4 | Actuación día boda |  | 8h | 2009-07-25 09:00 | 2009-07-25 19:00 | 82 | 15.12d | 1d | start no earlier than 2009-07-25 09:00 |  |
| 84 | 7.1.5 | Pago y Cierre contrato grupo | milestone | 0d | 2009-07-28 09:00 | 2009-07-28 09:00 | 83 | 14.12d |  | start no earlier than 2009-07-28 09:00 |  |

| ID | WBS | Task | Type | Duration | Start | Finish | Predecessors | Total slack | Free slack | Constraint | Deadline |
| --- | --- | --- | --- | --- | --- | --- | --- | --- | --- | --- | --- |
| 85 | 7.2 | **Música banquete** |  | 44d | 2009-06-02 09:00 | 2009-07-31 09:00 |  | 11.12d |  |  |  |
| 86 | 7.2.1 | Concertar cita previa |  | 1h | 2009-06-02 09:00 | 2009-06-02 10:00 |  | 52d | 0d |  |  |
| 87 | 7.2.2 | Selección tipo música |  | 2d | 2009-06-02 10:00 | 2009-06-04 10:00 | 86 | 52d | 0d |  |  |
| 88 | 7.2.3 | Firma contrato música banquete | milestone | 0d | 2009-06-04 10:00 | 2009-06-04 10:00 | 87 | 52d | 36.88d |  |  |
| 89 | 7.2.4 | Actuación día boda |  | 8h | 2009-07-25 09:00 | 2009-07-25 19:00 | 88 | 15.12d | 4d | start no earlier than 2009-07-25 09:00 |  |
| 90 | 7.2.5 | Pago y Cierre contrato música | milestone | 0d | 2009-07-31 09:00 | 2009-07-31 09:00 | 89 | 11.12d |  | start no earlier than 2009-07-31 09:00 |  |
| 91 | 8 | **Transporte** |  | 44d | 2009-06-02 09:00 | 2009-07-31 09:00 |  | 11.12d |  |  |  |
| 92 | 8.1 | **Transporte novios** |  | 44d | 2009-06-02 09:00 | 2009-07-31 09:00 |  | 11.12d |  |  |  |
| 93 | 8.1.1 | Concertar cita previa |  | 1h | 2009-06-02 09:00 | 2009-06-02 10:00 |  | 53.5d | 0d |  |  |
| 94 | 8.1.2 | Selección del tipo de transporte |  | 2h | 2009-06-02 10:00 | 2009-06-02 12:00 | 93 | 53.5d | 0d |  |  |
| 95 | 8.1.3 | Firma contrato | milestone | 0d | 2009-06-02 12:00 | 2009-06-02 12:00 | 94 | 53.5d | 38.62d |  |  |
| 96 | 8.1.4 | Desplazamiento de los novios iglesia |  | 8h | 2009-07-25 09:00 | 2009-07-25 19:00 | 95 | 14.88d | 0d | start no earlier than 2009-07-25 09:00 |  |
| 97 | 8.1.5 | Desplazamiento novios hotel noche bodas |  | 2h | 2009-07-27 09:00 | 2009-07-27 11:00 | 96 | 14.88d | 3.75d |  |  |
| 98 | 8.1.6 | Pago y Cierre del contrato | milestone | 0d | 2009-07-31 09:00 | 2009-07-31 09:00 | 97 | 11.12d |  | start no earlier than 2009-07-31 09:00 |  |
| 99 | 8.2 | **Transporte invitados** |  | 44d | 2009-06-02 09:00 | 2009-07-31 09:00 |  | 11.12d |  |  |  |
| 100 | 8.2.1 | Concertar cita previa |  | 1h | 2009-06-02 09:00 | 2009-06-02 10:00 |  | 53.75d | 0d |  |  |
| 101 | 8.2.2 | Selección del tipo de vehículo |  | 1h | 2009-06-02 10:00 | 2009-06-02 11:00 | 100 | 53.75d | 0d |  |  |
| 102 | 8.2.3 | Determinación servicios a prestar |  | 1h | 2009-06-02 11:00 | 2009-06-02 12:00 | 101 | 53.75d | 0d |  |  |
| 103 | 8.2.4 | Firma del contrato | milestone | 0d | 2009-06-02 12:00 | 2009-06-02 12:00 | 102 | 53.75d | 38.62d |  |  |
| 104 | 8.2.5 | Servicio de transporte |  | 8h | 2009-07-25 09:00 | 2009-07-25 19:00 | 103 | 15.12d | 4d | start no earlier than 2009-07-25 09:00 |  |
| 105 | 8.2.6 | Pago y Cierre de contrato | milestone | 0d | 2009-07-31 09:00 | 2009-07-31 09:00 | 104 | 11.12d |  | start no earlier than 2009-07-31 09:00 |  |
| 106 | 9 | **Trámites administrativos** |  | 41d | 2009-06-02 09:00 | 2009-07-27 19:00 |  | 14.12d |  |  |  |
| 107 | 9.1 | **Iglesia** |  | 41d | 2009-06-02 09:00 | 2009-07-27 19:00 |  | 14.12d |  |  |  |
| 108 | 9.1.1 | Concertar cita previa párroco |  | 1h | 2009-06-02 09:00 | 2009-06-02 10:00 |  | 18.75d | 0d |  |  |
| 109 | 9.1.2 | Reserva fecha boda |  | 1h | 2009-06-02 10:00 | 2009-06-02 11:00 | 108 | 23.5d | 0d |  |  |
| 110 | 9.1.3 | Selección fechas cursos prematrimoniales |  | 1h | 2009-06-02 11:00 | 2009-06-02 12:00 | 109 | 23.5d | 0d |  |  |
| 111 | 9.1.4 | Obtención certificados bautismo |  | 10d | 2009-06-02 10:00 | 2009-06-16 10:00 | 108 | 18.75d | 0d |  |  |
| 112 | 9.1.5 | Realización cursos prematrimoniales |  | 5d | 2009-06-02 12:00 | 2009-06-09 12:00 | 110 | 23.5d | 4.75d |  |  |
| 113 | 9.1.6 | Entrega certificados |  | 1h | 2009-06-16 10:00 | 2009-06-16 11:00 | 112, 111 | 18.75d |  |  | 2009-07-10 19:00 |
| 114 | 9.1.7 | Limpieza iglesia |  | 8h | 2009-07-24 09:00 | 2009-07-24 19:00 | 109 | 14.88d | 0d | start no earlier than 2009-07-24 09:00 |  |
| 115 | 9.1.8 | Celebración ceremonia |  | 2h | 2009-07-25 09:00 | 2009-07-25 11:00 | 114 | 14.88d | 0.75d |  |  |
| 116 | 9.1.9 | Recogida y limpieza iglesia |  | 8h | 2009-07-27 09:00 | 2009-07-27 19:00 | 115 | 14.12d | 0d | start no earlier than 2009-07-26 09:00 |  |
| 117 | 9.1.10 | Iglesia recogida | milestone | 0d | 2009-07-27 19:00 | 2009-07-27 19:00 | 116 | 14.12d |  |  |  |

| ID | WBS | Task | Type | Duration | Start | Finish | Predecessors | Total slack | Free slack | Constraint | Deadline |
| --- | --- | --- | --- | --- | --- | --- | --- | --- | --- | --- | --- |
| 118 | 9.2 | **Recinto banquete** |  | 40.62d | 2009-06-02 09:00 | 2009-07-27 16:00 |  | 14.5d |  |  |  |
| 119 | 9.2.1 | Cita previa ayuntamiento |  | 1h | 2009-06-02 09:00 | 2009-06-02 10:00 |  | 34.62d | 0d |  |  |
| 120 | 9.2.2 | Obtención permiso celebración evento |  | 2d | 2009-06-02 10:00 | 2009-06-04 10:00 | 119 | 34.62d | 0d |  |  |
| 121 | 9.2.3 | Firma contrato uso recinto | milestone | 0d | 2009-06-04 10:00 | 2009-06-04 10:00 | 120 | 34.62d | 0d |  |  |
| 122 | 9.2.4 | Cita previa proveedor carpa |  | 1h | 2009-06-04 10:00 | 2009-06-04 11:00 | 121 | 34.62d | 0d |  |  |
| 123 | 9.2.5 | Selección carpa |  | 1h | 2009-06-04 11:00 | 2009-06-04 12:00 | 122 | 34.62d | 0d |  |  |
| 124 | 9.2.6 | Firma contrato proveedor carpa | milestone | 0d | 2009-06-04 12:00 | 2009-06-04 12:00 | 123 | 34.62d |  |  | 2009-07-22 19:00 |
| 125 | 9.2.7 | Instalación carpa |  | 8h | 2009-07-24 09:00 | 2009-07-24 19:00 | 124 | 14.5d | 0d | start no earlier than 2009-07-24 09:00 |  |
| 126 | 9.2.8 | Celebración evento |  | 8h | 2009-07-25 09:00 | 2009-07-25 19:00 | 125 | 14.5d | 0d |  |  |
| 127 | 9.2.9 | Retirada carpa |  | 5h | 2009-07-27 09:00 | 2009-07-27 16:00 | 126 | 14.5d | 0d |  |  |
| 128 | 9.2.10 | Cierre contrato ayuntamiento | milestone | 0d | 2009-07-27 16:00 | 2009-07-27 16:00 | 127 | 14.5d |  |  |  |
| 129 | 9.2.11 | Cierre contrato proveedor carpa | milestone | 0d | 2009-07-27 16:00 | 2009-07-27 16:00 | 127 | 14.5d |  |  |  |
| 130 | 10 | **Organización banquete** |  | 44d | 2009-06-02 09:00 | 2009-07-31 09:00 |  | 11.12d |  |  |  |
| 131 | 10.1 | Concerta cita previa restaurador |  | 1h | 2009-06-02 09:00 | 2009-06-02 10:00 |  | 29.5d | 0d |  |  |
| 132 | 10.2 | Selección menú boda |  | 2d | 2009-06-02 10:00 | 2009-06-04 10:00 | 131 | 29.5d | 0d |  |  |
| 133 | 10.3 | Prueba menú boda |  | 3h | 2009-06-04 10:00 | 2009-06-04 13:00 | 132 | 29.5d | 0d |  |  |
| 134 | 10.4 | Firma contrato restaurante | milestone | 0d | 2009-06-04 13:00 | 2009-06-04 13:00 | 133 | 29.5d |  |  | 2009-07-15 19:00 |
| 135 | 10.5 | Selección servicio catering |  | 1h | 2009-06-02 09:00 | 2009-06-02 10:00 |  | 31.88d | 0d |  |  |
| 136 | 10.6 | Firma contrato catering | milestone | 0d | 2009-06-02 10:00 | 2009-06-02 10:00 | 135 | 31.88d |  |  | 2009-07-15 19:00 |
| 137 | 10.7 | Servicio restaurante boda |  | 8h | 2009-07-25 09:00 | 2009-07-25 19:00 | 134 | 15.12d | 4d | start no earlier than 2009-07-25 09:00 |  |
| 138 | 10.8 | Servicio catering boda |  | 8h | 2009-07-25 09:00 | 2009-07-25 19:00 | 136 | 15.12d | 4d | start no earlier than 2009-07-25 09:00 |  |
| 139 | 10.9 | Pago y Cierre contrato restaurante | milestone | 0d | 2009-07-31 09:00 | 2009-07-31 09:00 | 137 | 11.12d |  | start no earlier than 2009-07-31 09:00 |  |
| 140 | 10.10 | Pago y Cierre contrato catering | milestone | 0d | 2009-07-31 09:00 | 2009-07-31 09:00 | 138 | 11.12d |  | start no earlier than 2009-07-31 09:00 |  |
| 141 | 10.11 | **Noche de bodas** |  | 44d | 2009-06-02 09:00 | 2009-07-31 09:00 |  | 11.12d |  |  |  |
| 142 | 10.11.1 | Selección destino noche bodas |  | 1h | 2009-06-02 09:00 | 2009-06-02 10:00 |  | 36.62d | 0d |  |  |
| 143 | 10.11.2 | Selección hotel |  | 1h | 2009-06-02 10:00 | 2009-06-02 11:00 | 142 | 36.62d | 0d |  |  |
| 144 | 10.11.3 | Reserva hotel |  | 1h | 2009-06-02 11:00 | 2009-06-02 12:00 | 143 | 36.62d | 0d |  |  |
| 145 | 10.11.4 | Firma contrato hotel | milestone | 0d | 2009-06-02 12:00 | 2009-06-02 12:00 | 144 | 36.62d |  |  | 2009-07-22 19:00 |
| 146 | 10.11.5 | Noche de bodas hotel |  | 2d | 2009-07-24 09:00 | 2009-07-26 19:00 | 145 | 15.12d | 4d | finish no earlier than 2009-07-26 19:00 |  |
| 147 | 10.11.6 | Cierre contrato hotel | milestone | 0d | 2009-07-31 09:00 | 2009-07-31 09:00 | 146 | 11.12d |  | start no earlier than 2009-07-31 09:00 |  |
